# HighLevelTaskPlan-ISO_Datatype2

Schedule from MS Project, 2010-02-18 to 2010-05-21, A marks actual dates.
Personal

## Calendars

- Standard: Mon-Fri 08:00-12:00, 13:00-17:00; Sat-Sun off.

## Resources

| Resource |
| --- |
| SDK |
| caGrid |
| caAdapter |
| QA |
| 2 |
| 8 |
| 9 |
| 14 |
| 15FS-5 days |
| 6 |
| 20 |
| 16 |
| 21 |
| 24 |
| 29 |
| 31 |
| 32 |
| 37 |
| 38 |
| 39 |
| 40 |
| 10 |
| 42 |
| 45 |
| 46 |
| 47 |
| 44 |
| 49 |
| 25 |
| 54SS-5 days |
| 58 |
| 54 |
| 62 |
| 63 |
| 70 |
| 59 |
| 64 |

## Schedule

| ID | WBS | Task | Type | Duration | Start | Finish | Predecessors | Complete | Remaining | Total slack | Free slack | Constraint | Resources | Work | Actual work |
| --- | --- | --- | --- | --- | --- | --- | --- | --- | --- | --- | --- | --- | --- | --- | --- |
| 1 | 1 | **ISO Datatype support** |  | 67d? | 2010-02-18 A | 2010-05-21 |  | 68% | 21.49d? | 0d |  |  |  | 3580.8h | 2043.82h |
| 2 | 1.1 | Kickoff |  | 1d | 2010-03-01 | 2010-03-01 |  |  |  | 59d |  | start no earlier than 2010-03-01 |  |  |  |
| 4 | 1.2 | **Implementation** |  | 20d | 2010-03-02 A | 2010-03-29 |  | 75% | 5d | 39d |  |  |  | 480h | 360h |
| 5 | 1.2.1 | ISO 21090 Library |  | 20d | 2010-03-02 A | 2010-03-29 |  | 75% | 5d | 39d |  | start no earlier than 2010-03-02 |  |  |  |
| 6 | 1.2.2 | Analyze COPPA Localized library |  | 5d | 2010-03-02 A | 2010-03-08 A | 2 | 100% |  |  |  | start no earlier than 2010-03-02 | SDK; caGrid | 80h | 80h |
| 7 | 1.2.3 | Analyze COPPA serialization framework |  | 5d | 2010-03-02 A | 2010-03-08 A | 2 | 100% |  |  |  | start no earlier than 2010-03-02 | SDK; caGrid | 80h | 80h |
| 8 | 1.2.4 | Analyze COPPA OR Mapping framework |  | 5d | 2010-03-02 A | 2010-03-08 A | 2 | 100% |  |  |  | start no earlier than 2010-03-02 | SDK; caGrid | 80h | 80h |
| 9 | 1.2.5 | Implement enhancements in datatype library |  | 15d | 2010-03-09 A | 2010-03-29 | 8 | 50% | 7.5d | 39d | 0d | start no earlier than 2010-03-09 | SDK; caGrid | 240h | 120h |
| 10 | 1.2.6 | Baseline library code | milestone | 0d | 2010-03-29 | 2010-03-29 | 9 |  |  | 39d |  | start no earlier than 2010-03-29 |  |  |  |
| 12 | 1.3 | **SDK Enhancements** |  | 48d | 2010-02-18 A | 2010-04-26 |  | 82% | 8.59d | 19d |  |  |  | 1064h | 873.6h |
| 13 | 1.3.1 | Document short term and long term goals for the SDK |  | 10d | 2010-02-18 A | 2010-03-03 A |  | 100% |  |  |  | start no earlier than 2010-02-18 | SDK | 80h | 80h |
| 14 | 1.3.2 | Create design document for tag value specification |  | 10d | 2010-03-09 A | 2010-03-22 A | 8 | 100% |  |  |  | start no earlier than 2010-03-09 | SDK | 80h | 80h |
| 15 | 1.3.3 | Create design document for Hibernate mapping |  | 15d | 2010-03-09 A | 2010-03-29 | 8 | 90% | 1.5d | 39d | 0d | start no earlier than 2010-03-09 | SDK | 120h | 108h |
| 16 | 1.3.4 | Develop JAXB based serialization framework |  | 15d | 2010-03-09 A | 2010-03-29 A | 8 | 100% |  |  |  | start no earlier than 2010-03-09 | SDK | 120h | 120h |
| 17 | 1.3.5 | Create Test UML model |  | 5d | 2010-03-23 A | 2010-03-29 A | 14 | 100% |  |  |  | start no earlier than 2010-03-23 | SDK | 40h | 40h |
| 18 | 1.3.6 | Enhance SDK Java code generator for the ISO data types |  | 5d | 2010-03-23 A | 2010-03-29 A | 15FS-5d | 100% |  |  |  | start no earlier than 2010-03-23 | SDK | 40h | 40h |
| 19 | 1.3.7 | Enhance SDK ORM module for ISO data types |  | 10d | 2010-03-23 A | 2010-04-05 | 15FS-5d | 90% | 1d | 34d |  | start no earlier than 2010-03-23 | SDK | 80h | 72h |
| 20 | 1.3.8 | Enhance SDK service layer to support ISO data types |  | 15d | 2010-03-09 A | 2010-03-29 | 6 | 90% | 1.5d | 16.5d | 0d | start no earlier than 2010-03-09 | SDK | 120h | 108h |
| 21 | 1.3.9 | Integrate ISO 21090 library in JAXB serialization |  | 8d | 2010-03-30 A | 2010-04-08 | 20, 16 | 90% | 0.8d | 30.5d | 0d | start no earlier than 2010-03-30 | SDK | 64h | 57.6h |
| 22 | 1.3.10 | Enhance SDK proxy framework for ISO data types |  | 5d | 2010-04-09 A | 2010-04-15 | 21 | 90% | 0.5d | 26d |  | start no earlier than 2010-04-09 | SDK | 40h | 36h |
| 23 | 1.3.11 | Enhance SDK RESTful query translator for ISO data types |  | 15d | 2010-03-30 | 2010-04-19 | 20 |  |  | 24d |  | start no earlier than 2010-03-30 | SDK | 120h |  |
| 24 | 1.3.12 | Enhance BDA scripts for packaging and deployment |  | 15d | 2010-03-30 A | 2010-04-19 | 6, 20 | 90% | 1.5d | 3d | 0d | start no earlier than 2010-03-30 | SDK | 120h | 108h |
| 25 | 1.3.13 | Unit test and defect fix |  | 5d | 2010-04-20 A | 2010-04-26 | 24 | 60% | 2d | 0d |  | start no earlier than 2010-04-20 | SDK | 40h | 24h |
| 27 | 1.4 | **caAdapter Enhancements** |  | 42.8d? | 2010-03-02 A | 2010-04-29 |  | 92% | 3.56d? | 16.2d |  |  |  | 740.8h | 690.22h |
| 28 | 1.4.1 | Document the short and long term scope of the caAdapter efforts |  | 5d | 2010-03-02 A | 2010-03-08 A | 2 | 100% |  |  |  | start no earlier than 2010-03-02 | caAdapter | 40h | 40h |
| 29 | 1.4.2 | Enhance caAdapter to load ISO 21090 information |  | 10d | 2010-03-09 A | 2010-03-22 A | 28 | 100% |  |  |  | start no earlier than 2010-03-09 | caAdapter | 80h | 80h |
| 30 | 1.4.3 | Create template model |  | 5d | 2010-03-16 A | 2010-03-22 A | 28 | 100% |  |  |  | start no earlier than 2010-03-16 | caAdapter | 40h | 40h |
| 31 | 1.4.4 | Enhance caAdapter Model Mapping Service |  | 17d | 2010-03-23 A | 2010-04-14 | 30 | 90% | 1.7d | 26d | 0d | start no earlier than 2010-03-23 | caAdapter | 136h | 122.4h |
| 32 | 1.4.5 | Unit test and defect fix |  | 5d | 2010-04-15 A | 2010-04-21 | 31 | 80% | 1d | 22d | 0d | start no earlier than 2010-04-15 | caAdapter | 40h | 32h |
| 33 | 1.4.6 | Deliver baseline caAdapter | milestone | 0d | 2010-04-21 | 2010-04-21 | 32 |  |  | 22d |  | start no earlier than 2010-02-18 |  |  |  |
| 35 | 1.4.7 | caGrid_HighLevel_TaskPlan_ISO_Datatype |  | 42.8d? | 2010-03-02 A | 2010-04-29 |  | 90% | 4.35d? | 16.2d |  |  |  | 404.8h | 375.82h |

| ID | WBS | Task | Type | Duration | Start | Finish | Predecessors | Complete | Remaining | Total slack | Constraint | Resources | Work | Actual work |
| --- | --- | --- | --- | --- | --- | --- | --- | --- | --- | --- | --- | --- | --- | --- |
| 37 | 1.5 | **SDK/caGrid Integration** |  | 5d | 2010-04-27 | 2010-05-03 |  |  |  | 0d |  |  | 80h |  |
| 38 | 1.5.1 | Perform SDK and caGrid Integration |  | 5d | 2010-04-27 | 2010-05-03 | 25 |  |  | 0d | start no earlier than 2010-04-27 | SDK; caGrid | 80h |  |
| 40 | 1.6 | **QA Testing** |  | 20d | 2010-04-20 A | 2010-05-17 |  | 25% | 15d | 0d |  |  | 320h | 120h |
| 41 | 1.6.1 | Prepare test plan |  | 10d | 2010-04-20 A | 2010-05-03 | 38SS-5d | 50% | 5d | 0d | start no earlier than 2010-04-20 | QA; SDK; caGrid | 240h | 120h |
| 42 | 1.6.2 | Execute test cases |  | 10d | 2010-05-04 | 2010-05-17 | 41, 38 |  |  | 0d | start no earlier than 2010-05-04 | QA | 80h |  |
| 44 | 1.7 | **User Documentation** |  | 10d | 2010-05-04 | 2010-05-17 |  |  |  | 0d |  |  | 800h |  |
| 45 | 1.7.1 | Prepare user guide |  | 10d | 2010-05-04 | 2010-05-17 | 38 |  |  | 0d | start no earlier than 2010-05-04 | SDK; caGrid; caAdapter | 240h |  |
| 46 | 1.7.2 | Prepare installation guide |  | 10d | 2010-05-04 | 2010-05-17 | 38 |  |  | 0d | start no earlier than 2010-05-04 | SDK; caGrid; caAdapter | 240h |  |
| 47 | 1.7.3 | Deliver installation and user guide | milestone | 0d | 2010-05-17 | 2010-05-17 | 45, 46 |  |  | 0d | start no earlier than 2010-05-17 |  |  |  |
| 48 | 1.7.4 | Prepare developers guide for service developers with ISO 21090 datatypes |  | 10d | 2010-05-04 | 2010-05-17 | 38 |  |  | 4d | start no earlier than 2010-05-04 | SDK; caGrid; caAdapter | 240h |  |
| 49 | 1.7.5 | Develop developer guide documentation for data type extension |  | 10d | 2010-05-04 | 2010-05-17 | 38 |  |  | 4d | start no earlier than 2010-05-04 | caGrid | 80h |  |
| 51 | 1.8 | **Transition** |  | 4d | 2010-05-18 | 2010-05-21 |  |  |  | 0d |  |  | 96h |  |
| 52 | 1.8.1 | Prepare release notes, zope sites |  | 2d | 2010-05-18 | 2010-05-19 | 42, 47 |  |  | 0d | start no earlier than 2010-05-18 | SDK; caGrid; caAdapter | 48h |  |
| 53 | 1.8.2 | Upload artifacts on the public sites |  | 2d | 2010-05-20 | 2010-05-21 | 52 |  |  | 0d | start no earlier than 2010-05-20 | SDK; caGrid; caAdapter | 48h |  |
